# Assignment1

Schedule from MS Project, 2017-09-25 to 2018-02-28, A marks actual dates.

## Calendars

- Standard: Mon-Fri 08:00-12:00, 13:00-17:00; Sat-Sun off.

## Resources

| Resource |
| --- |
| PM1 |
| PM2 |
| PM3 |
| RE5 |
| RE76 |
| RE7 |
| RE8 |
| RE9 |
| RE10 |
| RE11 |
| RE12 |
| RE13 |
| RE14 |
| RE15 |
| SE5 |
| SE6 |
| SE7 |
| SE8 |
| SE9 |
| SE11 |
| SE12 |
| SE13 |
| SE14 |
| SE15 |
| SE16 |
| PE5 |
| PE21 |
| PE22 |
| PE23 |
| PE24 |
| PE25 |
| PE26 |
| PE27 |
| PE28 |
| PE29 |
| PE30 |
| PE34 |
| TE5 |
| TE43 |
| TE44 |
| TE45 |
| TE46 |
| TE47 |
| TE48 |
| TE49 |
| TE50 |
| DE5 |
| DE42 |
| DE43 |
| DE45 |
| DE47 |
| DE48 |
| DE49 |
| DE61 |
| DE62 |

## Schedule

| ID | WBS | Task | Duration | Start | Finish | Predecessors | Complete | Remaining | Total slack | Free slack | Constraint | Resources | Work | Actual work |
| --- | --- | --- | --- | --- | --- | --- | --- | --- | --- | --- | --- | --- | --- | --- |
| 1 | 1 | **Project 1** | 112.17d | 2017-09-25 A | 2018-02-28 |  |  | 111.93d | 0d |  |  |  | 5258.08h | 8h |
| 2 | 1.1 | **Project Plan** | 11d | 2017-09-25 | 2017-10-09 |  |  |  | -11.92d | 0d |  |  | 258h |  |
| 3 | 1.1.1 | Write Plan | 3d | 2017-09-25 | 2017-09-27 |  |  |  | -11d | 0d |  | PM1 | 24h |  |
| 4 | 1.1.2 | **Review Plan** | 6.25d | 2017-09-28 | 2017-10-06 |  |  |  | -11.92d | 0d |  |  | 220h |  |
| 5 | 1.1.2.1 | Preparation for Review | 3.75d | 2017-09-28 | 2017-10-03 | 3 |  |  | -11d | 0d | start no earlier than 2017-09-19 | PE5; RE5; SE5; TE5 | 120h |  |
| 6 | 1.1.2.2 | Review Meeting | 2.5d | 2017-10-03 | 2017-10-06 | 5 |  |  | -11d | 0d |  | PE5; RE5; SE5; TE5; PM1 | 100h |  |
| 7 | 1.1.3 | Rework | 1.75d | 2017-10-06 | 2017-10-09 | 6 |  |  | -11d | 0d |  | PM1 | 14h |  |
| 8 | 1.2 | **Risk Mitigation and contingency Plan** | 15.1d | 2017-09-25 A | 2017-10-16 | 7 | 6% | 14.23d | 0d |  |  |  | 113.76h | 8h |
| 9 | 1.2.1 | Write Plan | 0.92d | 2017-10-10 | 2017-10-10 | 7 |  |  | 0d |  |  | PM1 | 7.36h |  |
| 10 | 1.2.2 | **Review Plan** | 13.97d | 2017-09-25 A | 2017-10-12 | 9 | 11% | 12.45d | 0d |  |  |  | 97.36h | 8h |
| 11 | 1.2.2.1 | Preparation for Review | 1.38d | 2017-09-25 A | 2017-10-12 | 9 | 18% | 1.13d | 0d |  |  | DE5; PE5; RE5; SE5; TE5 | 53.2h | 8h |
| 12 | 1.2.2.2 | Review Meeting | 0.92d | 2017-10-12 | 2017-10-12 | 11 |  |  | 0d |  |  | DE5; PE5; PM1; RE5; SE5; TE5 | 44.16h |  |
| 13 | 1.2.3 | Rework | 1.13d | 2017-10-12 | 2017-10-16 | 12 |  |  | 0d |  |  | PM1 | 9.04h |  |
| 14 | 1.3 | **Requirement** | 12.15d | 2017-10-16 | 2017-11-01 | 13 |  |  | 0d |  |  |  | 558.48h |  |
| 15 | 1.3.1 | Write Requirements | 1.98d | 2017-10-16 | 2017-10-18 | 13 |  |  | 0d |  |  | RE5; RE7; RE8; RE9 | 63.28h |  |
| 16 | 1.3.2 | Write Use Case Model | 6.25d | 2017-10-18 | 2017-10-26 | 15 |  |  | 0d |  |  | RE10; RE11; RE12; RE13; RE14; RE15 | 300h |  |
| 17 | 1.3.3 | **Review Requirements/Use Case model** | 2.82d | 2017-10-26 | 2017-10-31 | 16, 15 |  |  | 0d |  |  |  | 159.76h |  |
| 18 | 1.3.3.1 | Preparation for Review requirements | 0.95d | 2017-10-26 | 2017-10-27 | 15 |  |  | 1.08d | 0d |  | DE5; PE5; SE5; TE5 | 30.4h |  |
| 19 | 1.3.3.2 | Preparation for review usecase | 1.88d | 2017-10-26 | 2017-10-30 | 16 |  |  | 0d |  |  | DE42; PE21; SE6; TE43 | 60.16h |  |
| 20 | 1.3.3.3 | Review Meeting for requirements | 0.79d | 2017-10-27 | 2017-10-30 | 18 |  |  | 1.08d |  |  | DE43; PE22; RE8; SE7; TE44 | 31.6h |  |
| 21 | 1.3.3.4 | Review Meetings for Usecases | 0.94d | 2017-10-30 | 2017-10-31 | 19 |  |  | 0d |  |  | DE45; PE23; RE9; SE8; TE45 | 37.6h |  |
| 22 | 1.3.4 | Rework | 1.11d | 2017-10-31 | 2017-11-01 | 21, 20 |  |  | 0d |  |  | RE5; RE7; RE8; RE9 | 35.44h |  |
| 23 | 1.4 | **Analysis** | 5.59d | 2017-11-01 | 2017-11-08 | 22 |  |  | 0d |  |  |  | 190.8h |  |
| 24 | 1.4.1 | Write Analysis Document | 0.74d | 2017-11-01 | 2017-11-01 | 22 |  |  | 0d |  |  | SE5; SE6; SE7; SE8 | 23.84h |  |

| ID | WBS | Task | Duration | Start | Finish | Predecessors | Total slack | Resources | Work |
| --- | --- | --- | --- | --- | --- | --- | --- | --- | --- |
| 25 | 1.4.2 | **Review Analysis Document** | 4.47d | 2017-11-02 | 2017-11-08 | 24 | 0d |  | 154.96h |
| 26 | 1.4.2.1 | Preparation for Analysis Document | 2.98d | 2017-11-02 | 2017-11-06 | 24 | 0d | DE5; PE5; RE5; TE50 | 95.36h |
| 27 | 1.4.2.2 | Review Meeting | 1.49d | 2017-11-06 | 2017-11-08 | 26 | 0d | DE62; PE34; RE76; SE16; TE50 | 59.6h |
| 28 | 1.4.3 | Rework | 0.38d | 2017-11-08 | 2017-11-08 | 27 | 0d | SE7; SE8; SE9; SE11 | 12h |
| 29 | 1.5 | **Design** | 11.83d | 2017-11-08 | 2017-11-24 | 28 | 0d |  | 379.6h |
| 30 | 1.5.1 | Write DD | 1.22d | 2017-11-08 | 2017-11-10 | 28 | 0d | SE7; SE8; SE9 | 29.36h |
| 31 | 1.5.2 | **Review DD** | 3.58d | 2017-11-10 | 2017-11-15 | 30 | 0d |  | 125.6h |
| 32 | 1.5.2.1 | Preparation for DD | 2.2d | 2017-11-10 | 2017-11-14 | 30 | 0d | DE5; PE5; RE5; TE47 | 70.4h |
| 33 | 1.5.2.2 | Review Meeting | 1.38d | 2017-11-14 | 2017-11-15 | 32 | 0d | DE5; PE5; RE5; SE5; TE47 | 55.2h |
| 34 | 1.5.3 | Rework | 0.6d | 2017-11-15 | 2017-11-16 | 33 | 0d | SE5; SE6; SE7 | 14.4h |
| 35 | 1.5.4 | Write Data Model(DM) | 4.38d | 2017-11-16 | 2017-11-22 | 34 | 0d | SE5; SE6; SE7; SE8 | 140h |
| 36 | 1.5.5 | **Review DM** | 1.75d | 2017-11-22 | 2017-11-24 | 35 | 0d |  | 60.64h |
| 37 | 1.5.5.1 | Preparation for DM | 1.17d | 2017-11-22 | 2017-11-23 | 35 | 0d | DE42; RE7; TE43; PE34 | 37.44h |
| 38 | 1.5.5.2 | Review Meeting | 0.58d | 2017-11-23 | 2017-11-24 | 37 | 0d | DE42; RE7; TE43; PE34; SE9 | 23.2h |
| 39 | 1.5.6 | Rework | 0.3d | 2017-11-24 | 2017-11-24 | 38 | 0d | SE6; SE7; SE8; SE9 | 9.6h |
| 40 | 1.6 | **Coding and Unit Test** | 25.8d | 2017-11-24 | 2018-01-01 | 39 | 0d |  | 2006.16h |
| 41 | 1.6.1 | Write Code | 9.73d | 2017-11-24 | 2017-12-08 | 34 | 0d | PE5; PE21; PE22; PE23; PE24; PE25; PE26; PE27; PE28; PE29; PE30; PE34 | 934.08h |
| 42 | 1.6.2 | **Unit Testing** | 8.58d | 2017-12-08 | 2017-12-20 | 41 | 0d |  | 788.88h |
| 43 | 1.6.2.1 | Prepare/Execute Test Cases | 2.24d | 2017-12-08 | 2017-12-12 | 41 | 0d | PE5; PE21; PE22; PE23; PE24; PE25; PE26; PE27; PE28; PE29; PE30; PE34 | 215.04h |
| 44 | 1.6.2.2 | Fix Found Defects | 1.99d | 2017-12-12 | 2017-12-14 | 43 | 0d | PE5; PE21; PE22; PE23; PE24; PE25; PE26; PE27; PE28; PE29; PE30; PE34 | 191.04h |
| 45 | 1.6.2.3 | Test Fixed Defects | 4.35d | 2017-12-14 | 2017-12-20 | 44 | 0d | PE5; PE21; PE22; PE23; PE24; PE25; PE26; PE27; PE28; PE29; PE30 | 382.8h |
| 46 | 1.6.3 | **Code Inspection** | 6.81d | 2017-12-20 | 2017-12-29 | 45 | 0d |  | 217.92h |
| 47 | 1.6.3.1 | Preparation for the code Inspection | 3.89d | 2017-12-20 | 2017-12-26 | 45 | 0d | DE5; RE5; SE5; TE5 | 124.48h |
| 48 | 1.6.3.2 | Code Inspection Meeting | 2.92d | 2017-12-26 | 2017-12-29 | 47 | 0d | DE5; RE5; SE5; TE5 | 93.44h |
| 49 | 1.6.4 | Rework | 0.68d | 2017-12-29 | 2018-01-01 | 48 | 0d | PE5; PE21; PE22; PE23; PE24; PE25; PE26; PE27; PE28; PE29; PE30; PE34 | 65.28h |

| ID | WBS | Task | Duration | Start | Finish | Predecessors | Total slack | Resources | Work |
| --- | --- | --- | --- | --- | --- | --- | --- | --- | --- |
| 50 | 1.7 | **Testing** | 33.42d | 2018-01-01 | 2018-02-15 | 22, 49 | 0d |  | 1444h |
| 51 | 1.7.1 | Write Test Plan(TP) | 4.93d | 2018-01-01 | 2018-01-08 | 22, 49 | 0d | TE5; TE44; TE45; TE46; TE43; TE47 | 236.8h |
| 52 | 1.7.2 | **Review TP** | 6.19d | 2018-01-08 | 2018-01-16 | 51 | 0d |  | 223.2h |
| 53 | 1.7.2.1 | Preparation for TP | 3.7d | 2018-01-08 | 2018-01-12 | 51 | 0d | PE22; RE8; DE47; SE12 | 118.4h |
| 54 | 1.7.2.2 | Review TP Meeting | 1.85d | 2018-01-12 | 2018-01-15 | 53 | 0d | DE5; PE5; RE5; SE5; TE5 | 74h |
| 55 | 1.7.2.3 | Rework | 0.64d | 2018-01-15 | 2018-01-16 | 54 | 0d | TE5; TE43; TE44; TE45; TE46; TE47 | 30.8h |
| 56 | 1.7.3 | Execute TP(Test cases) | 7d | 2018-01-16 | 2018-01-25 | 55 | 0d | TE5; TE43; TE44; TE45; TE46; TE47 | 336h |
| 57 | 1.7.4 | Fix Found Defects | 10.8d | 2018-01-25 | 2018-02-09 | 56 | 0d | PE5; PE21; PE22; PE23; PE24 | 432h |
| 58 | 1.7.5 | Test Fixed Defects | 4.5d | 2018-02-09 | 2018-02-15 | 57 | 0d | TE5; TE44; TE45; TE46; TE47; TE43 | 216h |
| 59 | 1.8 | **Documentation** | 8.27d | 2018-02-15 | 2018-02-28 | 22, 58 | 0d |  | 307.28h |
| 60 | 1.8.1 | User Documentation | 2.96d | 2018-02-15 | 2018-02-20 | 22, 58 | 0d | DE48; DE49; DE61; DE62; DE47 | 118.4h |
| 61 | 1.8.2 | **Review UD** | 5.31d | 2018-02-20 | 2018-02-28 | 60 | 0d |  | 188.88h |
| 62 | 1.8.2.1 | Preparation for UD Review | 2.96d | 2018-02-20 | 2018-02-23 | 60 | 0d | PE21; RE7; SE6; TE43 | 94.72h |
| 63 | 1.8.2.2 | Review UD Meeting | 1.97d | 2018-02-23 | 2018-02-27 | 62 | 0d | PE5; RE5; SE5; TE5; DE5 | 78.8h |
| 64 | 1.8.2.3 | Rework | 0.38d | 2018-02-27 | 2018-02-28 | 63 | 0d | DE5; DE42; DE43; DE45; DE47 | 15.36h |
